Schedule from OmniPlan, 2013-08-02 to 2013-10-15.
Project start 2013-08-02

## Resources

| Resource | Group |
| --- | --- |
| Resource 1 | staff |
| Equipment 1 | equipment |
| Material 1 | material |
| Group 1 | group |
| 萍钢 | staff |
| 志泽 | staff |
| 动画 | staff |
| 小一 | staff |
| 夏贝 | staff |
| 红明 | staff |
| 策划 | staff |
| 王刚 | staff |
| 孔聪 | staff |

## Schedule

| ID | WBS | Task | Start | Predecessors | Complete | Resources | Work | Actual work |
| --- | --- | --- | --- | --- | --- | --- | --- | --- |
| 1 | 1 | **技术调研Demo制作** |  |  |  |  |  |  |
| 2 | 1.1 | 选定框架 | 2013-08-05 |  | 100% | 萍钢 | 8h | 8h |
| 3 | 1.2 | 物理引擎Demo | 2013-08-06 | 2 | 100% | 萍钢 | 40h | 40h |
| 4 | 1.3 | DragonBones和Box2D的Demo | 2013-08-13 | 3 | 50% | 萍钢 | 24h | 12h |
| 5 | 1.4 | 粒子引擎Demo | 2013-08-16 | 4 |  | 萍钢 | 8h |  |
| 6 | 1.5 | Feathersui框架了解 | 2013-08-14 |  | 50% | 孔聪 | 16h | 8h |
| 7 | 2 | 策划额外讨论 |  |  | 100% |  | 32h | 32h |
| 8 | 3 | **模块1** |  |  |  |  |  |  |
| 9 | 3.1 | 策划 | 2013-09-06 | 7 | 100% | 策划 | 8h | 8h |
| 10 | 3.2 | 模块UI | 2013-08-02 |  |  | 夏贝 | 16h |  |
| 11 | 3.3 | **场景一** |  |  |  |  |  |  |
| 12 | 3.3.1 | 美术1 | 2013-08-02 |  | 100% | 红明 | 16h | 16h |
| 13 | 3.3.2 | 开发 | 2013-08-19 | 1 |  | 萍钢 | 8h |  |
| 14 | 3.4 | **场景二** |  |  |  |  |  |  |
| 15 | 3.4.1 | 美术1，服装 | 2013-08-06 | 10 | 80% | 夏贝 | 16h | 12.8h |
| 16 | 3.4.2 | 美术2 | 2013-08-06 | 12 | 100% | 红明 | 8h | 8h |
| 17 | 3.4.3 | 开发 | 2013-08-20 | 13 |  | 萍钢 | 16h |  |
| 18 | 3.4.4 | 小动画 | 2013-08-08 | 15 |  | 志泽 | 8h |  |
| 19 | 3.5 | **场景三** |  |  |  |  |  |  |
| 20 | 3.5.1 | 美术 | 2013-08-07 | 16 |  | 红明 | 4h |  |
| 21 | 3.5.2 | 开发 | 2013-08-22 | 17 |  | 萍钢 | 8h |  |
| 22 | 4 | **地图** |  |  |  |  |  |  |
| 23 | 4.1 | 美术 | 2013-08-21 | 36 |  | 夏贝 | 8h |  |
| 24 | 4.2 | 策划交互点 | 2013-08-27 | 34 |  | 策划 | 4h |  |
| 25 | 4.3 | 开发 | 2013-09-04 | 39 |  | 萍钢 | 16h |  |

Notes:
- 8: 晨起
- 22: 拖拽、数据交互

| ID | WBS | Task | Start | Predecessors | Complete | Resources | Work | Actual work |
| --- | --- | --- | --- | --- | --- | --- | --- | --- |
| 26 | 5 | **登陆注册** |  |  |  |  |  |  |
| 27 | 5.1 | 产品原型 | 2013-08-08 |  |  | 志泽 | 4h |  |
| 28 | 5.2 | UI风格 | 2013-08-14 | 35 | 50% | 红明 | 16h | 8h |
| 29 | 5.3 | UI设计 | 2013-08-16 | 28 |  | 夏贝 | 1h |  |
| 30 | 5.4 | 前端开发 | 2013-08-27 | 48 |  | 萍钢 | 3h |  |
| 31 | 5.5 | 后台 | 2013-08-02 |  |  | 小一 | 4h |  |
| 32 | 5.6 | 封号默认提供值 | 2013-08-19 | 46 |  | 策划 | 4h |  |
| 33 | 6 | **个人中心** |  |  |  |  |  |  |
| 34 | 6.1 | 个人中心相关策划 | 2013-08-20 | 32 |  | 策划 | 40h |  |
| 35 | 6.2 | 产品原型 | 2013-08-12 | 27 |  | 志泽 | 16h |  |
| 36 | 6.3 | UI设计 | 2013-08-19 | 29 |  | 夏贝 | 16h |  |
| 37 | 6.4 | 个人信息、成就、收集、游戏入口研发 | 2013-08-28 | 30 |  | 萍钢 | 16h |  |
| 38 | 6.5 | 成就、收集接口 | 2013-08-08 | 31 |  | 小一 | 8h |  |
| 39 | 6.6 | 速成手册 | 2013-08-30 | 37 |  | 萍钢 | 24h |  |
| 40 | 6.7 | 制作团队 |  |  |  |  | 8h |  |
| 41 | 7 | **引子** |  |  |  |  |  |  |
| 42 | 7.1 | 故事策划 | 2013-08-08 | 7 | 100% | 策划 | 16h | 16h |
| 43 | 7.2 | 图画 | 2013-08-16 | 42 |  | 红明 | 24h |  |
| 44 | 7.3 | 开发 | 2013-08-22 | 5 |  | 萍钢 | 4h |  |
| 45 | 8 | **首页** |  |  |  |  |  |  |
| 46 | 8.1 | 策划 | 2013-08-16 | 42 |  | 策划 | 4h |  |
| 47 | 8.2 | 美术 | 2013-08-21 | 43 |  | 红明 | 24h |  |
| 48 | 8.3 | 开发 | 2013-08-26 | 44 |  | 萍钢 | 4h |  |
| 49 | 9 | **社交分享** |  |  |  |  |  |  |
| 50 | 9.1 | 策划分享点和文案 | 2013-09-04 | 54 |  | 策划 | 24h |  |
| 51 | 9.2 | 研发 | 2013-08-09 | 38 |  | 小一 | 8h |  |
| 52 | 9.3 | UI皮肤 | 2013-08-22 | 23 |  | 夏贝 | 4h |  |

Notes:
- 26: 引子之后出现，不联网不让玩，注册登陆过后就可以不联网玩了 / 封号：默认提供、也可更改 / 用户名 / 密码
- 32: 默认提供、也可更改
- 33: 个人信息展示：显示封号、用户、注销账号、积分、属性 / 成就 / 收集 / 游戏入口 / 工具：帮助文档、地图 / 制作团队
- 34: 成就体系、收集体系、速成手册、制作团队
- 41: 4-5 / 页图，小狮子动画 / 1 / 个

| ID | WBS | Task | Start | Predecessors | Resources | Work |
| --- | --- | --- | --- | --- | --- | --- |
| 53 | 10 | **小狮子动画** |  |  |  |  |
| 54 | 10.1 | 多个动作策划，最好跟模块走 | 2013-08-28 | 24 | 策划 | 40h |
| 55 | 11 | **模块2** |  |  |  |  |
| 56 | 11.1 | **场景1** |  |  |  |  |
| 57 | 11.1.1 | 策划 | 2013-09-10 | 9 | 策划 | 8h |
| 58 | 11.1.2 | 美术 | 2013-08-08 | 20 | 红明 | 16h |
| 59 | 11.1.3 | 开发 | 2013-09-05 | 21 | 萍钢 | 8h |
| 60 | 11.2 | **场景2** |  |  |  |  |
| 61 | 11.2.1 | 策划 | 2013-09-11 | 57 | 策划 | 8h |
| 62 | 11.2.2 | 美术 | 2013-08-12 | 58 | 红明 | 16h |
| 63 | 11.2.3 | 开发 | 2013-09-09 | 59 | 萍钢 | 40h |
| 64 | 12 | **模块3** |  |  |  |  |
| 65 | 12.1 | 策划 | 2013-09-11 | 57 | 策划 | 24h |
| 66 | 12.2 | 主场景原画 | 2013-08-23 | 62 | 红明 | 24h |
| 67 | 12.3 | 游戏元素原画 | 2013-08-08 | 15 | 夏贝 | 40h |
| 68 | 12.4 | 开发 | 2013-09-16 | 63 | 萍钢 | 40h |
| 69 | 13 | **模块4** |  |  |  |  |
| 70 | 13.1 | **场景1** |  |  |  |  |
| 71 | 13.1.1 | 美术 | 2013-08-29 | 66 | 红明 | 16h |
| 72 | 13.1.2 | 策划 | 2013-09-17 | 65 | 策划 | 12h |
| 73 | 13.1.3 | 开发 | 2013-09-24 | 68 | 萍钢 | 8h |
| 74 | 13.2 | **场景2** |  |  |  |  |
| 75 | 13.2.1 | 美术 | 2013-09-02 | 71 | 红明 | 16h |
| 76 | 13.2.2 | 策划 | 2013-09-22 | 72 | 策划 | 12h |
| 77 | 13.2.3 | 开发 | 2013-09-25 | 73 | 萍钢 | 40h |

Notes:
- 55: 锻炼
- 56: 练武场、兵器架
- 60: 骑射
- 64: 传膳、做菜、试菜
- 69: 早读
- 74: 选书：圣训、要读的书

| ID | WBS | Task | Start | Predecessors | Complete | Resources | Work | Actual work |
| --- | --- | --- | --- | --- | --- | --- | --- | --- |
| 78 | 14 | **模块5** |  |  |  |  |  |  |
| 79 | 14.1 | **场景1** |  |  |  |  |  |  |
| 80 | 14.1.1 | 策划 | 2013-09-24 | 76 |  | 策划 | 12h |  |
| 81 | 14.1.2 | 美术 | 2013-09-04 | 75 |  | 红明 | 16h |  |
| 82 | 14.1.3 | 开发 | 2013-10-09 | 77 |  | 萍钢 | 8h |  |
| 83 | 14.2 | **场景2** |  |  |  |  |  |  |
| 84 | 14.2.1 | 策划 | 2013-09-26 | 80 |  | 策划 | 1.5h |  |
| 85 | 14.2.2 | 美术 | 2013-09-06 | 81 |  | 红明 | 16h |  |
| 86 | 14.2.3 | 开发，可写的，可选的 | 2013-10-10 | 82 |  | 萍钢 | 24h |  |
| 87 | 15 | **模块6** |  |  |  |  |  |  |
| 88 | 15.1 | **场景1** |  |  |  |  |  |  |
| 89 | 15.1.1 | 策划 | 2013-09-27 | 84 |  | 策划 | 12h |  |
| 90 | 15.1.2 | 美术 | 2013-09-10 | 85 | 50% | 红明 | 16h | 8h |
| 91 | 15.1.3 | 开发 | 2013-10-14 | 86 |  | 萍钢 | 8h |  |
| 92 | 15.2 | **场景2** |  |  |  |  |  |  |
| 93 | 15.2.1 | 策划 | 2013-10-08 | 89 |  | 策划 | 12h |  |
| 94 | 15.2.2 | 美术 | 2013-09-12 | 90 |  | 红明 | 16h |  |
| 95 | 15.2.3 | 开发 | 2013-10-15 | 91 |  | 萍钢 | 40h |  |
| 96 | 15.2.4 | 动画 |  |  |  |  | 24h |  |

Notes:
- 78: 上朝
- 79: 上朝情景
- 83: 批奏折
- 87: 娱乐
- 88: 外景
- 92: 戏台
